# 4746 hub

Schedule from a web Gantt chart, 2024-08-09 to 2024-08-12.
Saturdays and Sundays are off

## Schedule

| ID | WBS | Task | Duration | Start | Finish | inPeople |
| --- | --- | --- | --- | --- | --- | --- |
| 2 | 1 | 确认预扫问题 | 2d | 2024-08-09 | 2024-08-12 | 供应商 |
| 3 | 2 | 解决预扫问题，提交预扫通过结果 | 1d | 2024-08-09 | 2024-08-09 |  |
